# Browser Extension and Website Enhancing Employment Platforms with Verified Insights

Schedule from MS Project, 2024-09-12 to 2024-10-07, costs in ج.م.‏, A marks actual dates.

## Calendars

- Browser Extension Calender: Mon-Thu 09:00-12:00, 13:00-17:00; Fri-Sat off; Sun 09:00-12:00, 13:00-17:00. Exceptions (off unless hours are given): 2024-09-15, 2024-10-06.

## Resources

| Resource | Group | Rate |
| --- | --- | --- |
| Product Manager | Management | 343.75 |
| UI/UX Designer | Design | 187.5 |
| Frontend Developer | Development | 375 |
| Backend Developer | Development | 375 |
| Quality Assurance (QA) | QA | 218.75 |
| Browser API Specialist | Development | 437.5 |
| Project Manager | Management | 625 |
| Test Engineer | QA | 281.25 |
| Infrastructure (Cloud-Hosting) | Integration |  |
| Testing Tools (Browser Testing) | Integration |  |
| API Integration (LinkedIn) | Hardware |  |
| Security & Compliance | Servers |  |
| Software-Licenses | Miscellaneous |  |
| Risk/Contingency (10%) | Miscellaneous |  |

## Schedule

| ID | WBS | Task | Type | Duration | Start | Finish | Predecessors | Complete | Remaining | Baseline start | Baseline finish | Baseline duration | Total slack | Resources | Work | Actual work | Cost | Baseline cost | Actual cost |
| --- | --- | --- | --- | --- | --- | --- | --- | --- | --- | --- | --- | --- | --- | --- | --- | --- | --- | --- | --- |
| 1 | 1 | **SPRINT 1: CORE FEATURES** |  | 14d | 2024-09-12 A | 2024-10-07 |  | 98% | 0.27d | 2024-09-12 | 2024-10-03 | 13d | 0d | Product Manager; Project Manager; Infrastructure (Cloud-Hosting) [0.1%]; Testing Tools (Browser Testing) [0.1%]; API Integration (LinkedIn) [0.1%]; Security & Compliance [0.1%]; Software-Licenses [0.1%]; Risk/Contingency (10%) [0.1%] | 832h | 813.22h | 430,875 | 395,625 | 421,280.99 |
| 2 | 1.1 | **verified feedback on companies** |  | 14d | 2024-09-12 A | 2024-10-07 |  | 95% | 0.66d | 2024-09-12 | 2024-10-03 | 13d | 0d |  | 224h | 209.6h | 76,500 | 67,500 | 71,100 |
| 3 | 1.1.1 | 1-Design feedback display UI |  | 5d | 2024-09-12 A | 2024-09-22 A |  | 100% |  | 2024-09-12 | 2024-09-18 | 3d |  | UI/UX Designer | 40h | 40h | 7,500 | 4,500 | 7,500 |
| 4 | 1.1.2 | 2-Build feedback collection system |  | 6d | 2024-09-12 A | 2024-09-23 A | 3SS | 100% |  | 2024-09-12 | 2024-09-22 | 5d |  | Frontend Developer; Backend Developer | 96h | 96h | 36,000 | 30,000 | 36,000 |
| 5 | 1.1.3 | 3-Develop verification system for feedback |  | 5d | 2024-09-23 A | 2024-10-01 A | 4 | 100% |  | 2024-09-22 | 2024-09-30 | 5d |  | Backend Developer | 40h | 40h | 15,000 | 15,000 | 15,000 |
| 6 | 1.1.4 | 4-Integrate feedback with company profiles |  | 3d | 2024-10-01 A | 2024-10-07 | 5 | 70% | 0.9d | 2024-09-30 | 2024-10-03 | 3d | 0d | Frontend Developer; Backend Developer | 48h | 33.6h | 18,000 | 18,000 | 12,600 |
| 7 | 1.1.5 | Feedback UI Design Completed | milestone | 0d | 2024-10-07 A | 2024-10-07 A | 6 | 100% |  | 2024-10-03 | 2024-10-03 | 0d |  |  |  |  |  |  |  |
| 8 | 1.2 | **access to verified feedback on potential employees.** |  | 6d | 2024-09-12 A | 2024-09-23 A |  | 100% |  | 2024-09-12 | 2024-09-23 | 6d |  |  | 96h | 96h | 31,500 | 30,000 | 31,500 |
| 9 | 1.2.1 | 5-Design review display UI |  | 3d | 2024-09-12 A | 2024-09-18 A |  | 100% |  | 2024-09-12 | 2024-09-17 | 2d |  | UI/UX Designer | 24h | 24h | 4,500 | 3,000 | 4,500 |
| 10 | 1.2.2 | 6-Develop system for review submission |  | 3d | 2024-09-12 A | 2024-09-18 A | 9SS | 100% |  | 2024-09-12 | 2024-09-18 | 3d |  | Backend Developer; Frontend Developer | 48h | 48h | 18,000 | 18,000 | 18,000 |
| 11 | 1.2.3 | 7-Implement verification checks for Employee reviews |  | 3d | 2024-09-18 A | 2024-09-23 A | 10 | 100% |  | 2024-09-18 | 2024-09-23 | 3d |  | Backend Developer | 24h | 24h | 9,000 | 9,000 | 9,000 |
| 12 | 1.2.4 | Feedback Verification System Ready | milestone | 0d | 2024-09-23 A | 2024-09-23 A | 11 | 100% |  | 2024-09-23 | 2024-09-23 | 0d |  |  |  |  |  |  |  |
| 13 | 1.3 | **the browser extension to work on LinkedIn for easy feedback access.** |  | 13d | 2024-09-12 A | 2024-10-03 A |  | 100% |  | 2024-09-12 | 2024-10-01 | 11d |  |  | 288h | 288h | 107,500 | 90,500 | 107,500 |
| 14 | 1.3.1 | 8-Design and build browser extension UI |  | 5d | 2024-09-12 A | 2024-09-22 A |  | 100% |  | 2024-09-12 | 2024-09-19 | 4d |  | Browser API Specialist; Frontend Developer | 80h | 80h | 32,500 | 26,000 | 32,500 |
| 15 | 1.3.2 | 9-Develop feedback retrieval API |  | 4d | 2024-09-12 A | 2024-09-19 A | 14SS | 100% |  | 2024-09-12 | 2024-09-19 | 4d |  | Frontend Developer; Backend Developer | 64h | 64h | 24,000 | 24,000 | 24,000 |
| 16 | 1.3.3 | 10-Integrate with LinkedIn and Indeed APIs |  | 6d | 2024-09-19 A | 2024-09-30 A | 15 | 100% |  | 2024-09-19 | 2024-09-29 | 5d |  | Browser API Specialist; Backend Developer | 96h | 96h | 39,000 | 32,500 | 39,000 |
| 17 | 1.3.4 | 11-Perform cross-browser testing (Chrome, Firefox, Safari) |  | 3d | 2024-09-30 A | 2024-10-03 A | 16 | 100% |  | 2024-09-29 | 2024-10-01 | 2d |  | Quality Assurance (QA); Test Engineer | 48h | 48h | 12,000 | 8,000 | 12,000 |
| 18 | 1.3.5 | Browser Extension Integrated with LinkedIn | milestone | 0d | 2024-10-03 A | 2024-10-03 A | 17 | 100% |  | 2024-10-01 | 2024-10-01 | 0d |  |  |  |  |  |  |  |
